# Cronograma

Schedule from MS Project, 2018-08-13 to 2019-10-31, A marks actual dates.

## Calendars

- Padrão: Mon-Fri 09:00-12:00, 13:00-18:00; Sat-Sun off.

## Resources

| Resource |
| --- |
| Daniel |
| Huxley |
| Bruna |

## Schedule

| ID | WBS | Task | Duration | Start | Finish | Complete | Remaining | Actual finish | Baseline start | Baseline finish | Baseline duration | Constraint | Work | Actual work |
| --- | --- | --- | --- | --- | --- | --- | --- | --- | --- | --- | --- | --- | --- | --- |
| 1 | 1 | **Otimização Organizacional com Apoio de Sistemas de Informação** | 319d? | 2018-08-13 09:00 A | 2019-10-31 18:00 | 19% | 259.38d? |  | 2018-08-13 09:00 | 2011-06-15 18:00 | 0d? |  | 503h | 261h |
| 2 | 1.1 | **Cronograma / Documentação** | 1d | 2019-03-22 09:00 A | 2019-03-22 18:00 A | 100% |  |  | 2019-03-19 09:00 | 2019-03-19 18:00 | 0d? |  | 8h | 8h |
| 3 | 1.1.1 | Atualizar cronograma | 0.38d | 2019-03-22 09:00 A | 2019-03-22 18:00 A | 100% |  |  | 2019-03-19 09:00 | 2019-03-19 18:00 | 0d? | finish no earlier than 2018-09-03 18:00 | 3h | 3h |
| 4 | 1.1.2 | Atualizar carta de apresentação | 0.13d | 2019-03-22 09:00 A | 2019-03-22 10:02 A | 100% |  |  | 2019-03-19 09:00 | 2019-03-19 18:00 | 0d | finish no earlier than 2018-08-13 18:00 | 1h | 1h |
| 5 | 1.1.3 | Atualizar carta de intenção | 0.12d | 2019-03-22 09:00 A | 2019-03-22 10:00 A | 100% |  |  | 2019-03-19 09:00 | 2019-03-19 18:00 | 0d | finish no earlier than 2018-08-20 18:00 | 1h | 1h |
| 6 | 1.1.4 | Atualizar termo de compromisso | 0.12d | 2019-03-22 09:00 A | 2019-03-22 10:00 A | 100% |  |  | 2019-03-19 09:00 | 2019-03-19 18:00 | 0d | start no earlier than 2018-03-02 09:00 | 1h | 1h |
| 7 | 1.1.5 | Atualizar formulário de projeto extensionista | 0.13d | 2019-03-22 09:00 A | 2019-03-22 10:02 A | 100% |  |  | 2019-03-19 09:00 | 2019-03-19 18:00 | 0d | start no earlier than 2018-03-02 09:00 | 1h | 1h |
| 8 | 1.1.6 | Atualizar termo de abertura de projeto | 0.13d | 2019-03-22 09:00 A | 2019-03-22 10:02 A | 100% |  |  | 2019-03-19 09:00 | 2019-03-19 18:00 | 0d | start no earlier than 2018-03-02 09:00 | 1h | 1h |
| 9 | 1.2 | **Agradecimentos / Resumo / Introdução** | 6d | 2018-08-13 09:00 A | 2018-08-20 18:00 | 100% |  | 2018-08-20 10:00 | 2018-08-13 09:00 | 2018-08-20 18:00 | 0d |  | 10h | 10h |
| 10 | 1.2.1 | Agradecimentos | 0.12d | 2018-08-13 09:00 A | 2018-08-13 10:00 A | 100% |  |  | 2018-03-06 09:00 | 2018-03-06 18:00 | 0d | start no earlier than 2018-03-06 09:00 | 1h | 1h |
| 11 | 1.2.2 | Resumo | 0.25d | 2018-08-13 09:00 A | 2018-08-13 11:00 A | 100% |  |  | 2018-03-06 09:00 | 2018-03-06 18:00 | 0d | start no earlier than 2018-08-13 09:00 | 2h | 2h |
| 12 | 1.2.3 | **Introdução** | 1d | 2018-08-20 09:00 A | 2018-08-20 18:00 | 100% |  | 2018-08-20 10:00 | 2018-08-20 09:00 | 2018-08-20 18:00 | 0d |  | 7h | 7h |
| 13 | 1.2.3.1 | **Objetivos** | 0.12d | 2018-08-20 09:00 A | 2018-08-20 10:00 A | 100% |  |  | 2018-08-20 09:00 | 2018-08-20 18:00 | 0d |  | 2h | 2h |
| 14 | 1.2.3.1.1 | Objetivos gerais | 0.12d | 2018-08-20 09:00 A | 2018-08-20 10:00 A | 100% |  |  | 2018-08-20 09:00 | 2018-08-20 18:00 | 0d |  | 1h | 1h |
| 15 | 1.2.3.1.2 | Objetivos específicos | 0.12d | 2018-08-20 09:00 A | 2018-08-20 10:00 A | 100% |  |  | 2018-08-20 09:00 | 2018-08-20 18:00 | 0d |  | 1h | 1h |
| 16 | 1.2.3.2 | **Procedimentos de pesquisa** | 0.12d | 2018-08-20 09:00 A | 2018-08-20 10:00 A | 100% |  |  | 2018-08-20 09:00 | 2018-08-20 18:00 | 0d? |  | 5h | 5h |
| 17 | 1.2.3.2.1 | Pesquisa exploratória | 0.12d | 2018-08-20 09:00 A | 2018-08-20 10:00 A | 100% |  |  | 2018-08-20 09:00 | 2018-08-20 18:00 | 0d? | finish no earlier than 2018-03-13 18:00 | 1h | 1h |
| 18 | 1.2.3.2.2 | Pesquisa bibliográfica | 0.12d | 2018-08-20 09:00 A | 2018-08-20 10:00 A | 100% |  |  | 2018-08-20 09:00 | 2018-08-20 18:00 | 0d? |  | 1h | 1h |
| 19 | 1.2.3.2.3 | Pesquisa documental | 0.12d | 2018-08-20 09:00 A | 2018-08-20 10:00 A | 100% |  |  | 2018-08-20 09:00 | 2018-08-20 18:00 | 0d? |  | 1h | 1h |
| 20 | 1.2.3.2.4 | Estudo de caso | 0.12d | 2018-08-20 09:00 A | 2018-08-20 10:00 A | 100% |  |  | 2018-08-20 09:00 | 2018-08-20 18:00 | 0d? |  | 1h | 1h |
| 21 | 1.2.3.2.5 | Pesquisa ação | 0.12d | 2018-08-20 09:00 A | 2018-08-20 10:00 A | 100% |  |  | 2018-08-20 09:00 | 2018-08-20 18:00 | 0d |  | 1h | 1h |
| 22 | 1.3 | **Fundamentação Teórica** | 5.62d | 2018-08-27 09:00 A | 2018-09-03 15:00 A | 100% |  |  | 2018-03-20 09:00 | 2018-04-07 18:00 | 0d? |  | 28h | 28h |
| 23 | 1.3.1 | Pensamento sistêmico | 0.62d | 2018-08-27 09:00 A | 2018-08-27 15:00 A | 100% |  |  | 2018-08-27 09:00 | 2018-08-27 18:00 | 0d? | finish no earlier than 2018-04-07 18:00 | 5h | 5h |
| 24 | 1.3.2 | Sistemas de informação | 0.62d | 2018-08-27 09:00 A | 2018-08-27 15:00 A | 100% |  |  | 2018-08-27 09:00 | 2018-08-27 18:00 | 0d? | finish no earlier than 2018-03-21 18:00 | 5h | 5h |

| ID | WBS | Task | Duration | Start | Finish | Complete | Remaining | Actual start | Actual finish | Baseline start | Baseline finish | Baseline duration | Total slack | Constraint | Work | Actual work |
| --- | --- | --- | --- | --- | --- | --- | --- | --- | --- | --- | --- | --- | --- | --- | --- | --- |
| 25 | 1.3.3 | **Engenharia de software** | 5.62d | 2018-08-27 09:00 A | 2018-09-03 15:00 A | 100% |  |  |  | 2018-08-27 09:00 | 2018-09-03 18:00 | 0d? |  |  | 18h | 18h |
| 26 | 1.3.3.1 | Gerenciamento de configuração de software | 1d | 2018-08-27 09:00 A | 2018-08-27 18:00 A | 100% |  |  |  | 2018-08-27 09:00 | 2018-08-27 18:00 | 0d |  | finish no earlier than 2018-08-27 18:00 | 8h | 8h |
| 27 | 1.3.3.2 | Modelos de ciclo de vida em engenharia de software e requisitos | 0.62d | 2018-09-03 09:00 A | 2018-09-03 15:00 A | 100% |  |  |  | 2018-09-03 09:00 | 2018-09-03 18:00 | 0d |  | start no earlier than 2018-09-03 09:00 | 5h | 5h |
| 28 | 1.3.3.3 | Métodologia e métodos | 0.62d | 2018-09-03 09:00 A | 2018-09-03 15:00 A | 100% |  |  |  | 2018-09-03 09:00 | 2018-09-03 18:00 | 0d |  | start no earlier than 2018-09-03 09:00 | 5h | 5h |
| 29 | 1.4 | **Estudo de Caso** | 299d? | 2018-09-10 09:00 A | 2019-10-31 18:00 | 17% | 248.87d? |  |  | 2018-09-10 09:00 | 2019-10-31 18:00 | 0d? |  |  | 457h | 215h |
| 30 | 1.4.1 | **Caracterização da organização e seu ambiente** | 26d | 2018-09-10 09:00 A | 2018-10-15 18:00 | 100% |  |  | 2018-10-15 16:00 | 2018-09-10 09:00 | 2018-10-15 18:00 | 0d |  |  | 30h | 30h |
| 31 | 1.4.1.1 | Histórico organizacional | 0.25d | 2018-09-10 16:00 A | 2018-09-10 18:00 A | 100% |  |  |  | 2018-09-10 09:00 | 2018-09-10 18:00 | 0d |  | finish no earlier than 2018-09-10 18:00 | 2h | 2h |
| 32 | 1.4.1.2 | Missão, valores e visão estratégica | 0.5d | 2018-09-10 09:00 A | 2018-09-10 14:00 A | 100% |  |  |  | 2018-09-10 09:00 | 2018-09-10 18:00 | 0d |  |  | 4h | 4h |
| 33 | 1.4.1.3 | Matriz SWOT | 0.5d | 2018-09-17 09:00 A | 2018-09-17 14:00 A | 100% |  |  |  | 2018-09-17 09:00 | 2018-09-17 18:00 | 0d |  | start no earlier than 2018-09-17 09:00 | 4h | 4h |
| 34 | 1.4.1.4 | Planejamento estratégico | 0.5d | 2018-09-24 09:00 A | 2018-09-24 14:00 A | 100% |  |  |  | 2018-09-24 09:00 | 2018-09-24 18:00 | 0d |  | start no earlier than 2018-09-24 09:00 | 4h | 4h |
| 35 | 1.4.1.5 | Mapeamento dos processos com BPMN | 1d | 2018-10-01 09:00 A | 2018-10-01 18:00 A | 100% |  |  |  | 2018-10-01 09:00 | 2018-10-01 18:00 | 0d |  | start no earlier than 2018-10-01 09:00 | 8h | 8h |
| 36 | 1.4.1.6 | Identificação do problema | 0.25d | 2018-10-08 09:00 A | 2018-10-08 11:00 A | 100% |  |  |  | 2018-10-08 09:00 | 2018-10-08 18:00 | 0d |  | start no earlier than 2018-10-08 09:00 | 2h | 2h |
| 37 | 1.4.1.7 | Análise de viabilidade econômica | 0.75d | 2018-10-15 09:00 A | 2018-10-15 16:00 A | 100% |  |  |  | 2018-10-15 09:00 | 2018-10-15 18:00 | 0d |  | start no earlier than 2018-10-15 09:00 | 6h | 6h |
| 38 | 1.4.2 | **Fase de concepção** | 21d | 2019-03-07 09:00 | 2019-04-04 18:00 | 97% | 0.65d | 2018-10-02 09:00 |  | 2018-10-02 09:00 |  |  |  |  | 37h | 35h |
| 39 | 1.4.2.1 | Gerenciamento de configuração de software | 0.25d | 2018-10-02 09:00 A | 2018-10-02 11:00 A | 100% |  |  |  | 2018-10-02 09:00 | 2018-10-02 18:00 |  |  | start no earlier than 2018-10-02 09:00 | 2h | 2h |
| 40 | 1.4.2.2 | Gerencimento de mudanças | 0.25d | 2018-10-02 09:00 A | 2018-10-02 11:00 A | 100% |  |  |  | 2018-10-02 09:00 | 2018-10-02 18:00 | 0d |  | start no earlier than 2018-10-02 09:00 | 2h | 2h |
| 41 | 1.4.2.3 | Modelo de ciclo de vida | 0.38d | 2018-10-15 09:00 A | 2018-10-15 12:00 A | 100% |  |  |  | 2018-10-15 09:00 | 2018-10-15 18:00 | 0d |  | start no earlier than 2018-10-15 09:00 | 3h | 3h |
| 42 | 1.4.2.4 | Metodologias de engenharia de software adotadas | 0.38d | 2018-10-15 09:00 A | 2018-10-15 12:00 A | 100% |  |  |  | 2018-10-15 09:00 | 2018-10-15 18:00 | 0d |  | start no earlier than 2018-10-15 09:00 | 3h | 3h |
| 43 | 1.4.2.5 | Gerenciamento de projeto | 3d | 2018-10-22 09:00 A | 2018-10-24 18:00 A | 100% |  |  |  | 2018-10-22 09:00 | 2018-10-24 18:00 | 0d |  | finish no earlier than 2018-10-24 18:00 | 12h | 12h |
| 44 | 1.4.2.6 | Atualizar engenharia de requisitos | 3d | 2019-03-20 09:00 A | 2019-03-22 18:00 A | 100% |  |  |  | 2019-03-20 09:00 | 2019-03-22 18:00 | 0d |  | finish no earlier than 2019-03-22 18:00 | 8h | 8h |
| 45 | 1.4.2.7 | Atualizar diagrama de caso de uso | 0.25d | 2019-04-04 16:00 | 2019-04-04 18:00 |  |  |  |  |  |  |  | 150d | finish no earlier than 2019-04-04 18:00 | 2h |  |
| 46 | 1.4.2.8 | Plano de testes | 0.62d | 2019-03-22 09:00 A | 2019-03-22 15:00 A | 100% |  |  |  | 2019-03-22 09:00 | 2019-03-22 18:00 | 0d |  | start no earlier than 2019-03-22 09:00 | 5h | 5h |
| 47 | 1.4.3 | **Fase de elaboração** | 37d | 2019-04-04 09:00 | 2019-05-24 18:00 | 40% | 22.35d | 2018-10-30 09:00 |  |  |  |  |  |  | 60h | 40h |
| 48 | 1.4.3.1 | Atualizar diagrama de classes | 0.12d | 2019-04-04 09:00 | 2019-04-04 10:00 |  |  |  |  |  |  |  | 150.88d |  | 3h |  |
| 49 | 1.4.3.2 | Atualizar diagrama de objetos | 0.25d | 2019-04-04 09:00 | 2019-04-04 11:00 |  |  |  |  |  |  |  | 150.75d |  | 2h |  |
| 50 | 1.4.3.3 | Atualizar diagrama de sequência | 0.12d | 2019-04-04 09:00 | 2019-04-04 10:00 |  |  |  |  |  |  |  | 150.88d |  | 1h |  |
| 51 | 1.4.3.4 | Atualizar diagrama de estado | 0.12d | 2019-04-04 09:00 | 2019-04-04 10:00 |  |  |  |  |  |  |  | 150.88d |  | 1h |  |
| 52 | 1.4.3.5 | Atualizar diagrama de implementação | 0.5d | 2019-04-04 09:00 | 2019-04-04 14:00 |  |  |  |  |  |  |  | 150.5d |  | 1h |  |
| 53 | 1.4.3.6 | Atualizar diagrama entidade-relacionamento | 0.5d | 2019-04-04 09:00 | 2019-04-04 14:00 |  |  |  |  |  |  |  | 150.5d |  | 4h |  |
| 54 | 1.4.3.7 | Desenvolvimento do banco de dados | 1d | 2019-04-05 09:00 | 2019-04-06 18:00 |  |  |  |  |  |  |  | 149d | finish no earlier than 2019-04-06 18:00 | 8h |  |

| ID | WBS | Task | Duration | Start | Finish | Complete | Remaining | Actual start | Baseline start | Baseline finish | Total slack | Constraint | Work | Actual work |
| --- | --- | --- | --- | --- | --- | --- | --- | --- | --- | --- | --- | --- | --- | --- |
| 55 | 1.4.3.8 | **Prototipagem** | 15d | 2018-10-30 09:00 A | 2018-11-19 18:00 | 50% | 7.5d |  | 2018-10-30 09:00 |  |  |  | 40h | 40h |
| 56 | 1.4.3.8.1 | Telas de navegação | 5d | 2018-10-30 09:00 A | 2018-11-13 18:00 A | 100% |  |  | 2018-10-30 09:00 | 2018-11-13 18:00 |  | finish no earlier than 2018-11-13 18:00 | 40h | 40h |
| 57 | 1.4.3.8.2 | Acesso a banco de dados | 5d | 2018-10-30 09:00 | 2018-11-05 18:00 |  |  |  |  |  | 258d |  |  |  |
| 58 | 1.4.4 | **Fase de construção** | 88d | 2019-05-01 09:00 | 2019-08-30 18:00 | 12% | 77.08d | 2018-10-30 09:00 | 2019-03-18 09:00 |  |  |  | 330h | 110h |
| 59 | 1.4.4.1 | Desenvolvimento de software | 88d | 2019-05-01 09:00 A | 2019-08-30 18:00 | 15% | 74.8d |  | 2019-03-18 09:00 |  | 44d | finish no earlier than 2019-08-30 18:00 | 200h | 30h |
| 60 | 1.4.4.2 | Auditoria e segurança do sistema de informação | 88d | 2019-05-01 09:00 | 2019-08-30 18:00 |  |  |  |  |  | 44d | start no earlier than 2019-05-01 09:00 | 50h |  |
| 61 | 1.4.4.3 | **Interface** | 11d | 2018-10-30 09:00 A | 2018-11-13 18:00 A | 100% |  |  | 2018-10-30 09:00 | 2018-11-13 18:00 |  |  | 80h | 80h |
| 62 | 1.4.4.3.1 | Avaliação ergonômica | 6d | 2018-10-30 09:00 A | 2018-11-06 18:00 A | 100% |  |  | 2018-10-30 09:00 | 2018-11-06 18:00 |  |  | 40h | 40h |
| 63 | 1.4.4.3.2 | Avaliação heurística (usabilidade) | 5d | 2018-10-30 09:00 A | 2018-11-13 18:00 A | 100% |  |  | 2018-10-30 09:00 | 2018-11-13 18:00 |  | finish no earlier than 2018-11-06 18:00 | 40h | 40h |
| 64 | 1.4.4.4 | Licenciamento e requisitos legais | 3d | 2019-07-30 09:00 | 2019-08-01 18:00 |  |  |  |  |  | 65d | finish no earlier than 2019-08-01 18:00 |  |  |
| 65 | 1.4.4.5 | Sistema de apoio à decisão | 5d | 2019-05-01 09:00 | 2019-05-07 18:00 |  |  |  |  |  | 127d |  |  |  |
| 66 | 1.4.5 | **Fase de transição** | 29d | 2019-08-01 09:00 | 2019-09-10 18:00 |  |  |  |  |  |  |  |  |  |
| 67 | 1.4.5.1 | Manual do usuário | 7d | 2019-09-02 09:00 | 2019-09-10 18:00 |  |  |  |  |  | 37d | start no earlier than 2019-09-02 09:00 |  |  |
| 68 | 1.4.5.2 | Manual do administrador | 5d | 2019-08-01 09:00 | 2019-08-07 18:00 |  |  |  |  |  | 61d |  |  |  |
| 69 | 1.4.5.3 | Plano de treinamento | 10d | 2019-08-01 09:00 | 2019-08-14 18:00 |  |  |  |  |  | 56d |  |  |  |
| 70 | 1.4.5.4 | Custo benefício do sistema de informação | 1d | 2019-08-01 09:00 | 2019-08-01 18:00 |  |  |  |  |  | 65d |  |  |  |
| 71 | 1.4.5.5 | Dificuldades identificadas | 1d | 2019-08-01 09:00 | 2019-08-01 18:00 |  |  |  |  |  | 65d |  |  |  |
